# exam_1

Schedule from MS Project, 2014-02-01 to 2014-08-29, status date 2014-02-28, costs in €, A marks actual dates.

## Calendars

- WebProject: Mon-Fri 08:00-12:00, 13:00-17:00; Sat-Sun off. Exceptions (off unless hours are given): 2014-04-25 (2), 2014-05-01 (3), 2014-06-02 (4).

## Resources

| Resource | Rate |
| --- | --- |
| Project Manager | 88 |
| Senior Developer | 72 |
| Junior Developer | 45 |
| Administration | 35 |
| Web designer | 32 |
| Toner | 10 |
| Consultant –sysadmin |  |

## Schedule

| ID | WBS | Task | Type | Duration | Start | Finish | Predecessors | Complete | Remaining | Baseline start | Baseline finish | Baseline duration | Total slack | Free slack | Constraint | Deadline | Resources | Work | Actual work | Cost | Baseline cost | Actual cost | Critical? |
| --- | --- | --- | --- | --- | --- | --- | --- | --- | --- | --- | --- | --- | --- | --- | --- | --- | --- | --- | --- | --- | --- | --- | --- |
| 1 | 1 | Project start | milestone | 0d | 2014-02-01 | 2014-02-01 |  |  |  | 2014-02-01 | 2014-02-01 | 0d | 147d |  |  |  |  |  |  |  |  |  | NOT CRITICAL |
| 2 | 2 | **Analysis/Software Requirements** |  | 76d | 2014-02-03 A | 2014-05-21 |  |  | 76d | 2014-02-03 | 2014-05-21 | 76d | 37.16d | 0d |  |  |  | 1267.2h |  | 75,209.6 | 75,209.6 |  | NOT CRITICAL |
| 3 | 2.1 | T1 Conduct needs analysis |  | 18d | 2014-02-03 | 2014-02-26 |  |  |  | 2014-02-03 | 2014-02-26 | 18d | 37.16d | 0d |  |  | Senior Developer; Project Manager [20%] | 172.8h |  | 12,902.4 | 12,902.4 |  | NOT CRITICAL |
| 4 | 2.2 | T2 Draft preliminary software specifications |  | 24d | 2014-02-27 | 2014-04-01 | 3 |  |  | 2014-02-27 | 2014-04-01 | 24d | 37.16d | 0d |  |  | Project Manager [20%] | 38.4h |  | 3,379.2 | 3,379.2 |  | NOT CRITICAL |
| 5 | 2.3 | T3 Incorporate feedback on software specifications |  | 10d | 2014-04-16 | 2014-04-30 | 3, 4FS+10d |  |  | 2014-04-16 | 2014-04-30 | 10d | 37.16d | 0d | start no earlier than 2014-02-17 |  | Senior Developer; Junior Developer [350%] | 384h |  | 20,736 | 20,736 |  | NOT CRITICAL |
| 6 | 2.4 | Dev1 | milestone | 0d | 2014-04-30 | 2014-04-30 | 5FF |  |  | 2014-04-30 | 2014-04-30 | 0d | 51.16d |  |  |  |  |  |  |  |  |  | NOT CRITICAL |
| 7 | 2.5 | T4 Secure required resources |  | 14d | 2014-04-15 A | 2014-05-21 | 4, 5 |  | 14d | 2014-05-02 | 2014-05-21 | 14d | 37.16d |  |  |  | Junior Developer [200%]; Senior Developer [300%]; Administration | 672h |  | 38,192 | 38,192 |  | NOT CRITICAL |
| 8 | 3 | Analysis finished | milestone | 0d | 2014-05-21 | 2014-05-21 | 2FF |  |  | 2014-05-21 | 2014-05-21 | 0d | 71d |  |  |  |  |  |  |  |  |  | NOT CRITICAL |
| 9 | 4 | **Design** |  | 40d | 2014-02-20 A | 2014-04-16 | 2SS+25d | 46% | 21.71d | 2014-02-10 | 2014-04-16 | 48d | 94d | 0d |  |  |  | 1220.6h | 452.2h | 54,132.8 | 57,920 | 20,828.8 | NOT CRITICAL |
| 10 | 4.1 | T5 Review preliminary software specifications |  | 28d | 2014-03-10 A | 2014-04-16 |  | 30% | 19.6d | 2014-03-10 | 2014-04-16 | 28d | 94d | 0d |  |  | Senior Developer; Junior Developer [300%] | 707h | 236.6h | 32,760 | 32,760 | 11,592 | NOT CRITICAL |
| 11 | 4.2 | T6 Develop functional specifications |  | 15d | 2014-02-20 A | 2014-03-12 | 10SS+10d | 17% | 12.42d | 2014-02-10 | 2014-02-28 | 15d | -8d | 0d | finish no later than 2014-02-28 |  | Web designer; Junior Developer [200%] | 360h | 62h | 14,640 | 14,640 | 2,504 | HYPERCRITICAL |
| 12 | 4.3 | T7 Obtain approval to proceed |  | 16d | 2014-03-10 A | 2014-03-31 A | 10FF | 100% |  | 2014-03-13 | 2014-04-16 | 25d |  |  |  |  | Project Manager [20%]; Administration | 153.6h | 153.6h | 6,732.8 | 10,520 | 6,732.8 | CRITICAL |
| 13 | 4.4 | Dev2 | milestone | 0d | 2014-03-31 | 2014-03-31 | 12FF |  |  | 2014-04-16 | 2014-04-16 | 0d | 106d |  |  |  |  |  |  |  |  |  | NOT CRITICAL |
| 14 | 5 | Design finished | milestone | 0d | 2014-04-16 | 2014-04-16 | 9FF |  |  | 2014-04-16 | 2014-04-16 | 0d | 94d |  |  |  |  |  |  |  |  |  | NOT CRITICAL |
| 15 | 6 | **Development** |  | 63d | 2014-05-08 A | 2014-08-05 | 2FS-10d | 59% | 25.84d | 2014-05-08 | 2014-07-03 | 40d | 0d |  |  |  |  | 2363.2h | 1442h | 117,537.6 | 83,265.6 | 72,636 | CRITICAL |
| 16 | 6.1 | T8 Review functional specifications |  | 25d | 2014-05-08 A | 2014-06-12 A |  | 100% |  | 2014-05-08 | 2014-05-19 | 8d |  |  |  | 2014-12-15 | Senior Developer; Junior Developer [400%] | 1000h | 1000h | 50,400 | 16,128 | 50,400 | CRITICAL |
| 17 | 6.2 | T9 Develop code |  | 13d | 2014-05-08 A | 2014-05-26 | 16SS | 18% | 10.66d | 2014-05-08 | 2014-05-26 | 13d | 13d |  |  |  | Web designer [150%]; Project Manager [30%]; Junior Developer [200%]; Senior Developer | 499.2h | 90h | 24,585.6 | 24,585.6 | 4,900 | NOT CRITICAL |
| 18 | 6.3 | T10 Development complete |  | 27d | 2014-06-30 A | 2014-08-05 | 16, 17 | 41% | 16d | 2014-05-27 | 2014-07-03 | 27d | -37d | 0d |  |  | Senior Developer; Junior Developer [200%]; Administration | 864h | 352h | 42,552 | 42,552 | 17,336 | HYPERCRITICAL |
| 19 | 7 | Development finished | milestone | 0d | 2014-06-15 | 2014-06-15 | 15FF |  |  | 2014-06-15 | 2014-06-15 | 0d | -37d | 0d | finish no later than 2014-06-15 |  |  |  |  |  |  |  | HYPERCRITICAL |
| 20 | 8 | **Testing** |  | 55d | 2014-06-10 A | 2014-08-25 | 9SS+14d, 15SS+22d | 4% | 52.89d | 2014-06-10 | 2014-08-25 | 55d | 4d | 0d |  |  |  | 1142.8h | 18h | 60,312.4 | 60,312.4 | 939 | NOT CRITICAL |
| 21 | 8.1 | T11 Develop unit test plans |  | 20.12d | 2014-06-10 A | 2014-07-08 |  | 15% | 17.12d | 2014-06-10 | 2014-07-04 | 19d | -14.12d | 0d |  |  | Project Manager [20%]; Junior Developer | 80.4h | 18h | 4,925.2 | 4,925.2 | 939 | HYPERCRITICAL |
| 22 | 8.2 | T12 Develop integration test plans |  | 24d | 2014-06-10 | 2014-07-11 | 21SS |  |  | 2014-06-10 | 2014-07-11 | 24d | -30d | 0d |  |  | Senior Developer; Junior Developer [200%] | 576h |  | 31,104 | 31,104 |  | HYPERCRITICAL |
| 23 | 8.3 | Dev3 | milestone | 0d | 2014-07-11 | 2014-07-11 | 22FF |  |  | 2014-07-11 | 2014-07-11 | 0d | 35d |  |  |  |  |  |  |  |  |  | NOT CRITICAL |
| 24 | 8.4 | T13 Unit Testing |  | 19d | 2014-07-30 | 2014-08-25 | 21, 22FS+12d |  |  | 2014-07-30 | 2014-08-25 | 19d | -30d | 0d |  |  | Project Manager [20%]; Toner [2000%] | 30.4h |  | 2,875.2 | 2,875.2 |  | HYPERCRITICAL |
| 25 | 8.5 | T14 Integration Testing |  | 15d | 2014-07-15 | 2014-08-04 | 24 |  |  | 2014-07-15 | 2014-08-04 | 15d | -30d | 0d | start no later than 2014-07-15 |  | Web designer [250%]; Project Manager [30%]; Senior Developer [150%] | 456h |  | 21,408 | 21,408 |  | HYPERCRITICAL |
| 26 | 9 | Testing finished | milestone | 0d | 2014-08-25 | 2014-08-25 | 20FF |  |  | 2014-08-25 | 2014-08-25 | 0d | 4d |  |  |  |  |  |  |  |  |  | NOT CRITICAL |

| ID | WBS | Task | Type | Duration | Start | Finish | Predecessors | Baseline start | Baseline finish | Baseline duration | Total slack | Free slack | Constraint | Resources | Work | Cost | Baseline cost | Critical? |
| --- | --- | --- | --- | --- | --- | --- | --- | --- | --- | --- | --- | --- | --- | --- | --- | --- | --- | --- |
| 27 | 10 | **Training** |  | 54d | 2014-06-17 | 2014-08-29 | 20SS+5d | 2014-06-17 | 2014-08-29 | 54d | 0d |  |  |  | 2664.8h | 129,566.4 | 129,566.4 | CRITICAL |
| 28 | 10.1 | T15 Develop training specifications for end users |  | 37d | 2014-06-17 | 2014-08-06 |  | 2014-06-17 | 2014-08-06 | 37d | 0d |  |  | Web designer [250%]; Project Manager [30%]; Junior Developer [300%]; Senior Developer | 2012.8h | 92,766.4 | 92,766.4 | CRITICAL |
| 29 | 10.2 | T16 Develop training materials |  | 17d | 2014-08-07 | 2014-08-29 | 28 | 2014-08-07 | 2014-08-29 | 17d | 0d |  | finish no later than 2014-08-31 | Toner [1000%]; Junior Developer [400%]; Senior Developer | 488h | 25,732 | 25,732 | CRITICAL |
| 30 | 10.3 | T17 Finalize training materials |  | 18d | 2014-07-29 | 2014-08-21 | 29FF-6d | 2014-07-29 | 2014-08-21 | 18d | 6d | 0d |  | Administration; Senior Developer | 164h | 11,068 | 11,068 | NOT CRITICAL |
| 31 | 10.4 | Dev4 | milestone | 0d | 2014-08-21 | 2014-08-21 | 30FF | 2014-08-21 | 2014-08-21 | 0d | 6d |  |  |  |  |  |  | NOT CRITICAL |
| 32 | 11 | Training finished | milestone | 0d | 2014-08-29 | 2014-08-29 | 27FF | 2014-08-29 | 2014-08-29 | 0d | 0d |  |  |  |  |  |  | CRITICAL |
| 33 | 12 | **Deployment** |  | 31d | 2014-07-15 | 2014-08-26 | 20SS+10d, 27SS+20d | 2014-07-15 | 2014-08-26 | 31d | -17d | 0d |  |  | 822h | 44,582 | 44,582 | HYPERCRITICAL |
| 34 | 12.1 | T18 Determine final deployment strategy |  | 8d | 2014-07-15 | 2014-07-24 |  | 2014-07-15 | 2014-07-24 | 8d | -17d | 0d |  | Web designer; Senior Developer; Junior Developer [400%] | 384h | 18,176 | 18,176 | HYPERCRITICAL |
| 35 | 12.2 | T19 Secure deployment resources |  | 10d | 2014-07-15 | 2014-07-28 | 34FF | 2014-07-15 | 2014-07-28 | 10d | 4d | 0d |  | Junior Developer [150%]; Senior Developer | 200h | 11,160 | 11,160 | NOT CRITICAL |
| 36 | 12.3 | Dev5 | milestone | 0d | 2014-07-28 | 2014-07-28 | 35FF | 2014-07-28 | 2014-07-28 | 0d | 4d |  |  |  |  |  |  | NOT CRITICAL |
| 37 | 12.4 | T20 Deploy software |  | 21d | 2014-07-29 | 2014-08-26 | 34SS+10d | 2014-07-29 | 2014-08-26 | 21d | -17d | 0d |  | Junior Developer [600%]; Senior Developer | 238h | 15,246 | 15,246 | HYPERCRITICAL |
| 38 | 13 | Deployment finished | milestone | 0d | 2014-08-26 | 2014-08-26 | 33FF | 2014-08-26 | 2014-08-26 | 0d | -17d | 0d |  |  |  |  |  | HYPERCRITICAL |
| 39 | 14 | Project finished | milestone | 0d | 2014-08-01 | 2014-08-01 | 38FF | 2014-08-01 | 2014-08-01 | 0d | -17d | 0d | finish no later than 2014-08-01 |  |  |  |  | HYPERCRITICAL |
| 40 | 15 | **Meetings** |  | 82.5d | 2014-02-10 | 2014-06-09 |  | 2014-02-10 | 2014-06-09 | 82.5d | 59.5d |  |  |  |  |  |  | NOT CRITICAL |
| 41 | 15.1 | Meetings 1 |  | 4h | 2014-02-10 | 2014-02-10 |  | 2014-02-10 | 2014-02-10 | 4h | 141.5d |  | start no earlier than 2014-02-10 |  |  |  |  | NOT CRITICAL |
| 42 | 15.2 | Meetings 2 |  | 4h | 2014-04-14 | 2014-04-14 |  | 2014-04-14 | 2014-04-14 | 4h | 96.5d |  | start no earlier than 2014-04-14 |  |  |  |  | NOT CRITICAL |
| 43 | 15.3 | Meetings 3 |  | 4h | 2014-06-09 | 2014-06-09 |  | 2014-06-09 | 2014-06-09 | 4h | 59.5d |  | start no earlier than 2014-06-09 |  |  |  |  | NOT CRITICAL |
