# exercise_3

Schedule from MS Project, 2013-09-10 to 2014-01-28, costs in €, A marks actual dates.

## Calendars

- Standard: Mon-Fri 08:00-12:00, 13:00-17:00; Sat-Sun off.

## Resources

| Resource | Rate |
| --- | --- |
| Project Manager | 80 |
| Sales representative | 45 |
| Teacher | 50 |
| Clerk | 25 |
| Teacher Cost |  |
| Equipment | 10 |

## Schedule

| ID | WBS | Task | Type | Duration | Start | Finish | Predecessors | Complete | Remaining | Baseline start | Baseline finish | Baseline duration | Total slack | Free slack | Constraint | Resources | Work | Actual work | Cost | Baseline cost | Actual cost |
| --- | --- | --- | --- | --- | --- | --- | --- | --- | --- | --- | --- | --- | --- | --- | --- | --- | --- | --- | --- | --- | --- |
| 1 | 1 | **Organization of a workshop** |  | 101d | 2013-09-10 A | 2014-01-28 |  | 51% | 49.39d | 2013-09-10 | 2014-01-17 | 93.5d | 0d |  |  |  | 2365.71h | 1008.91h | 80,674.76 | 70,777.91 | 35,684.52 |
| 2 | 1.1 | Project start | milestone | 0d | 2013-09-10 | 2013-09-10 |  |  |  | 2013-09-10 | 2013-09-10 | 0d | 93.5d |  |  |  |  |  |  |  |  |
| 3 | 1.2 | **Phase 1** |  | 55.06d | 2013-09-10 A | 2013-11-26 |  | 76% | 13.31d | 2013-09-10 | 2013-11-07 | 42.06d | 45.94d | 0d |  |  | 507.2h | 427.2h | 17,388.91 | 9,788.91 | 13,896 |
| 4 | 1.2.1 | T1 workshop market analysis |  | 8d | 2013-09-10 A | 2013-09-19 |  | 25% | 6d | 2013-09-10 | 2013-09-19 | 8d | 28d | 24.06d |  | Sales representative; Project Manager [20%] | 76.8h | 19.2h | 3,904 | 3,904 | 976 |
| 5 | 1.2.2 | T2 recruit new staff |  | 0.06d | 2013-10-18 A | 2013-10-18 |  |  | 0.06d | 2013-10-15 | 2013-10-15 | 0.06d | 3.94d | 0d | start no earlier than 2013-10-15 | Project Manager [20%]; Clerk [5000%] | 22.4h |  | 564.91 | 564.91 |  |
| 6 | 1.2.3 | Dev1 | milestone | 0d | 2013-10-18 | 2013-10-18 | 5 |  |  | 2013-10-15 | 2013-10-15 | 0d | 65.44d |  |  |  |  |  |  |  |  |
| 7 | 1.2.4 | T3 choose new basic equipment |  | 17d | 2013-11-01 A | 2013-11-26 A | 4, 5FS+10d | 100% |  | 2013-10-29 | 2013-11-07 | 7d |  |  |  | Sales representative; Clerk [200%] | 408h | 408h | 12,920 | 5,320 | 12,920 |
| 8 | 1.3 | Phase 1 finished | milestone | 0d | 2013-11-26 | 2013-11-26 | 3FF |  |  | 2013-11-07 | 2013-11-07 | 0d | 38.44d |  |  |  |  |  |  |  |  |
| 9 | 1.4 | **Phase 2** |  | 42.94d | 2013-10-23 A | 2013-12-20 |  | 62% | 16.39d | 2013-10-18 | 2013-12-11 | 38.44d | 27d | 0d |  |  | 1423.71h | 561.71h | 47,751.85 | 45,455 | 21,288.52 |
| 10 | 1.4.1 | T4 choose new special equipment |  | 10.82d | 2013-10-24 A | 2013-11-07 | 4, 5FS+4d | 27% | 7.88d | 2013-10-21 | 2013-11-01 | 9d | 2.12d |  |  | Clerk [200%] | 144h | 18h | 3,600 | 3,600 | 450 |
| 11 | 1.4.2 | T5 draw new layout |  | 8d | 2013-11-15 | 2013-11-27 | 7SS+10d |  |  | 2013-11-12 | 2013-11-22 | 8d | -4.06d | 0d |  | Sales representative; Clerk [300%] | 227h |  | 6,375 | 6,375 |  |
| 12 | 1.4.3 | Dev2 | milestone | 0d | 2013-11-27 | 2013-11-27 | 11 |  |  | 2013-11-22 | 2013-11-22 | 0d | 37.44d |  |  |  |  |  |  |  |  |
| 13 | 1.4.4 | T6 train new staff |  | 15d | 2013-11-12 A | 2013-12-02 | 10 | 50% | 7.5d | 2013-11-12 | 2013-12-02 | 15d | 0d |  | must finish on 2013-12-02 | Teacher; Clerk [200%] | 360h | 180h | 12,000 | 12,000 | 6,000 |
| 14 | 1.4.5 | T7 order new basic equipment |  | 42.94d | 2013-10-23 A | 2013-12-20 A | 11FF | 100% |  | 2013-10-18 | 2013-11-22 | 25d |  |  |  | Project Manager [20%] | 68.71h | 68.71h | 5,496.85 | 3,200 | 5,496.85 |
| 15 | 1.4.6 | T8 order new special equipment |  | 6.5d | 2013-12-07 A | 2013-12-17 | 13 | 95% | 0.35d | 2013-12-03 | 2013-12-11 | 6.5d | -5.5d | 0d | finish no later than 2013-12-15 | Sales representative; Clerk [400%] | 312h | 295h | 9,880 | 9,880 | 9,341.67 |
| 16 | 1.4.7 | Dev3 | milestone | 0d | 2013-12-17 | 2013-12-17 | 15 |  |  | 2013-12-11 | 2013-12-11 | 0d | 30.5d |  |  |  |  |  |  |  |  |
| 17 | 1.4.8 | T9 vist and supervise the rooms |  | 13d | 2013-11-10 | 2013-11-27 | 7SS, 11SS |  |  | 2013-11-10 | 2013-11-27 | 13d | -4.06d | 0d | start no later than 2013-11-10 | Teacher; Clerk [200%] | 312h |  | 10,400 | 10,400 |  |
| 18 | 1.5 | Phase 2 finished | milestone | 0d | 2013-12-20 | 2013-12-20 | 9FF |  |  | 2013-12-11 | 2013-12-11 | 0d | 27d |  |  |  |  |  |  |  |  |
| 19 | 1.6 | **Phase 3** |  | 53d | 2013-11-15 A | 2014-01-28 |  | 12% | 46.82d | 2013-11-15 | 2014-01-17 | 45.5d | -9d | 0d |  |  | 434.8h | 20h | 15,534 | 15,534 | 500 |
| 20 | 1.6.1 | T10 unpack and inspect equipment |  | 7d | 2013-12-23 | 2013-12-31 | 14, 15 |  |  | 2013-12-11 | 2013-12-20 | 7d | -9d | 0d |  | Sales representative; Clerk [200%] | 168h |  | 5,320 | 5,320 |  |
| 21 | 1.6.2 | T11 install services |  | 9.75d | 2013-11-15 A | 2013-11-28 | 17FF | 44% | 5.46d | 2013-11-15 | 2013-11-27 | 9d | 14.25d |  |  | Project Manager [20%]; Clerk | 64.4h | 20h | 2,402 | 2,402 | 500 |
| 22 | 1.6.3 | T12 install equipment |  | 11d | 2014-01-01 | 2014-01-15 | 20, 21 |  |  | 2013-12-20 | 2014-01-06 | 11d | -9d | 0d |  | Sales representative; Clerk [200%] | 188h |  | 6,460 | 6,460 |  |
| 23 | 1.6.4 | Dev4 | milestone | 0d | 2014-01-15 | 2014-01-15 | 22 |  |  | 2014-01-06 | 2014-01-06 | 0d | 0d |  |  |  |  |  |  |  |  |
| 24 | 1.6.5 | T13 workshop execution |  | 9d | 2014-01-16 | 2014-01-28 | 22 |  |  | 2014-01-06 | 2014-01-17 | 9d | -9d | 0d |  | Project Manager [20%]; Equipment [2000%] | 14.4h |  | 1,352 | 1,352 |  |
| 25 | 1.7 | Phase 3 finished | milestone | 0d | 2014-01-28 | 2014-01-28 | 19FF |  |  | 2014-01-17 | 2014-01-17 | 0d | -9d | 0d |  |  |  |  |  |  |  |
| 26 | 1.8 | Project finished | milestone | 0d | 2014-01-15 | 2014-01-15 | 25 |  |  | 2014-01-15 | 2014-01-15 | 0d | -9d | 0d | must finish on 2014-01-15 |  |  |  |  |  |  |

| ID | WBS | Task | Duration | Start | Finish | Baseline start | Baseline finish | Baseline duration | Total slack | Constraint |
| --- | --- | --- | --- | --- | --- | --- | --- | --- | --- | --- |
| 27 | 1.9 | **Project meetings** | 70.5d | 2013-10-07 | 2014-01-13 | 2013-10-07 | 2014-01-13 | 70.5d | 11.5d |  |
| 28 | 1.9.1 | Project meetings 1 | 4h | 2013-10-07 | 2013-10-07 | 2013-10-07 | 2013-10-07 | 4h | 74d | start no earlier than 2013-10-07 |
| 29 | 1.9.2 | Project meetings 2 | 4h | 2013-10-21 | 2013-10-21 | 2013-10-21 | 2013-10-21 | 4h | 64d | start no earlier than 2013-10-21 |
| 30 | 1.9.3 | Project meetings 3 | 4h | 2013-11-04 | 2013-11-04 | 2013-11-04 | 2013-11-04 | 4h | 54d | start no earlier than 2013-11-04 |
| 31 | 1.9.4 | Project meetings 4 | 4h | 2013-11-18 | 2013-11-18 | 2013-11-18 | 2013-11-18 | 4h | 44d | start no earlier than 2013-11-18 |
| 32 | 1.9.5 | Project meetings 5 | 4h | 2013-12-02 | 2013-12-02 | 2013-12-02 | 2013-12-02 | 4h | 34d | start no earlier than 2013-12-02 |
| 33 | 1.9.6 | Project meetings 6 | 4h | 2013-12-16 | 2013-12-16 | 2013-12-16 | 2013-12-16 | 4h | 24d | start no earlier than 2013-12-16 |
| 34 | 1.9.7 | Project meetings 7 | 4h | 2013-12-30 | 2013-12-30 | 2013-12-30 | 2013-12-30 | 4h | 14d | start no earlier than 2013-12-30 |
| 35 | 1.9.8 | Project meetings 8 | 4h | 2014-01-13 | 2014-01-13 | 2014-01-13 | 2014-01-13 | 4h | 4d | start no earlier than 2014-01-13 |
